# Assignment1-Allocation-100

Schedule from MS Project, 2016-07-22 to 2016-11-08.
Toshiba

## Calendars

- Standard: Mon-Fri 08:00-12:00, 13:00-17:00; Sat-Sun off.

## Resources

| Resource | Group |
| --- | --- |
| PM1 | Project Manager |
| PM2 | Project Manager |
| PM3 | Project Manager |
| PM4 | Project Manager |
| RE1 | Resource Engineer |
| RE5 | Resource Engineer |
| RE7 | Resource Engineer |
| RE8 | Resource Engineer |
| RE102 | Resource Engineer |
| RE103 | Resource Engineer |
| RE117 | Resource Engineer |
| RE118 | Resource Engineer |
| RE119 | Resource Engineer |
| SE6 | Systems Engineers |
| SE7 | Systems Engineers |
| SE8 | Systems Engineers |
| SE204 | Systems Engineers |
| SE205 | Systems Engineers |
| SE501 | Systems Engineers |
| SE503 | Systems Engineers |
| SE601 | Systems Engineers |
| SE603 | Systems Engineers |
| PE1 | Programmers/Software Engineer |
| PE3 | Programmers/Software Engineer |
| PE5 | Programmers/Software Engineer |
| PE6 | Programmers/Software Engineer |
| PE7 | Programmers/Software Engineer |
| PE8 | Programmers/Software Engineer |
| PE9 | Programmers/Software Engineer |
| PE10 | Programmers/Software Engineer |
| PE202 | Programmers/Software Engineer |
| PE203 | Programmers/Software Engineer |
| PE205 | Programmers/Software Engineer |
| TE1 | Testing Engineer |
| TE2 | Testing Engineer |
| TE3 | Testing Engineer |
| TE304 | Testing Engineer |
| TE302 | Testing Engineer |
| TE2403 | Testing Engineer |
| TE404 | Testing Engineer |
| TE405 | Testing Engineer |
| TE509 | Testing Engineer |
| DE6 | Documentation Engineer |
| DE7 | Documentation Engineer |
| DE8 | Documentation Engineer |
| DE103 | Documentation Engineer |
| DE104 | Documentation Engineer |
| DE105 | Documentation Engineer |
| DE203 | Documentation Engineer |
| DE204 | Documentation Engineer |
| DE205 | Documentation Engineer |

## Schedule

| ID | WBS | Task | Duration | Start | Finish | Predecessors | Total slack | Resources | Work |
| --- | --- | --- | --- | --- | --- | --- | --- | --- | --- |
| 1 | 1 | **Assignment1** | 77.33d | 2016-07-22 | 2016-11-08 |  | 0d |  | 5889.04h |
| 2 | 1.1 | **Project Plan** | 5.65d | 2016-07-22 | 2016-08-01 |  | 0d |  | 188.4h |
| 3 | 1.1.1 | Write Plan | 0.83d | 2016-07-22 | 2016-07-25 |  | 0d | PM1 | 6.64h |
| 4 | 1.1.2 | **Review Plan** | 4.82d | 2016-07-25 | 2016-08-01 |  | 0d |  | 181.76h |
| 5 | 1.1.2.1 | Preparation for review | 2.75d | 2016-07-25 | 2016-07-28 | 3 | 0d | DE6; PE1; RE1; SE6; TE1 | 110h |
| 6 | 1.1.2.2 | Review Meeting | 1.38d | 2016-07-28 | 2016-07-29 | 5 | 0d | DE6; PE1; PM1; RE1; SE6; TE1 | 66.24h |
| 7 | 1.1.2.3 | Rework | 0.69d | 2016-07-29 | 2016-08-01 | 6 | 0d | PM1 | 5.52h |
| 8 | 1.2 | **Requirements** | 8.81d | 2016-08-01 | 2016-08-11 |  | 0d |  | 417.36h |
| 9 | 1.2.1 | Write requirements | 1.38d | 2016-08-01 | 2016-08-02 | 7 | 0d | RE5; RE7; RE8; RE1 | 44.16h |
| 10 | 1.2.2 | Write Use Case model | 0.57d | 2016-08-01 | 2016-08-01 | 7 | 0.81d | RE102 | 4.56h |
| 11 | 1.2.3 | **Review requirements/Use case model** | 7.09d | 2016-08-02 | 2016-08-11 |  | 0d |  | 354.88h |
| 12 | 1.2.3.1 | Preparation for review | 3.89d | 2016-08-02 | 2016-08-08 | 9, 10 | 0d | DE6; PE1; SE6; TE1 | 124.48h |
| 13 | 1.2.3.2 | Review Meeting | 3.2d | 2016-08-08 | 2016-08-11 | 12 | 0d | RE1; RE5; RE7; RE8; RE102; DE6; PE1; SE6; TE1 | 230.4h |
| 14 | 1.2.4 | Rework | 0.34d | 2016-08-11 | 2016-08-11 | 13 | 0d | RE1; RE5; RE7; RE8; RE102 | 13.76h |
| 15 | 1.3 | **Analysis** | 4.28d | 2016-08-11 | 2016-08-18 |  | 0d |  | 188.8h |
| 16 | 1.3.1 | Write Analysis Document | 0.73d | 2016-08-11 | 2016-08-12 | 14 | 0d | SE6; SE7; SE8; SE204; SE205 | 29.36h |
| 17 | 1.3.2 | **Review Analysis Document** | 3.55d | 2016-08-12 | 2016-08-18 |  | 0d |  | 159.44h |
| 18 | 1.3.2.1 | Preparation for Analysis Document | 2.2d | 2016-08-12 | 2016-08-16 | 16 | 0d | PE1; PE3; RE1; RE5 | 70.4h |
| 19 | 1.3.2.2 | Review Meeting | 1.1d | 2016-08-16 | 2016-08-17 | 18 | 0d | SE6; SE7; SE8; SE204; SE205; PE1; PE3; RE1; RE5 | 79.2h |
| 20 | 1.3.2.3 | Rework | 0.25d | 2016-08-17 | 2016-08-18 | 19 | 0d | SE6; SE7; SE8; SE204; SE205 | 9.84h |
| 21 | 1.4 | **Design** | 17.32d | 2016-08-18 | 2016-09-12 |  | 0d |  | 769.92h |
| 22 | 1.4.1 | Write DD | 1.01d | 2016-08-18 | 2016-08-19 | 20 | 0d | SE6; SE7; SE8; SE204; SE205 | 40.24h |
| 23 | 1.4.2 | **Review DD** | 13.85d | 2016-08-19 | 2016-09-08 |  | 0d |  | 620.88h |
| 24 | 1.4.2.1 | Preparation for DD | 8.38d | 2016-08-19 | 2016-08-31 | 22 | 0d | PE1; PE3; RE1; RE5 | 268.16h |
| 25 | 1.4.2.2 | Review Meeting | 4.19d | 2016-08-31 | 2016-09-06 | 24 | 0d | SE6; SE7; SE8; SE204; SE205; PE1; PE3; RE1; RE5 | 301.68h |
| 26 | 1.4.2.3 | Rework | 1.28d | 2016-09-06 | 2016-09-08 | 25 | 0d | SE6; SE7; SE8; SE204; SE205 | 51.04h |
| 27 | 1.4.3 | Write Data Model | 0.55d | 2016-09-08 | 2016-09-08 | 26 | 0d | SE6; SE7; SE8; SE204; SE205 | 22h |

| ID | WBS | Task | Duration | Start | Finish | Predecessors | Total slack | Free slack | Resources | Work |
| --- | --- | --- | --- | --- | --- | --- | --- | --- | --- | --- |
| 28 | 1.4.4 | **Review DM** | 1.91d | 2016-09-08 | 2016-09-12 |  | 0d |  |  | 86.8h |
| 29 | 1.4.4.1 | Preparation for DM | 0.92d | 2016-09-08 | 2016-09-09 | 27 | 0d |  | PE1; PE3; RE1; RE5 | 29.44h |
| 30 | 1.4.4.2 | Review Meeting | 0.55d | 2016-09-09 | 2016-09-12 | 29 | 0d |  | SE6; SE7; SE8; SE204; SE205; PE1; PE3; RE1; RE5 | 39.6h |
| 31 | 1.4.4.3 | Rework | 0.44d | 2016-09-12 | 2016-09-12 | 30 | 0d |  | SE6; SE7; SE8; SE204; SE205 | 17.76h |
| 32 | 1.5 | **Coding and unit test** | 28.89d | 2016-09-12 | 2016-10-21 |  | 0d |  |  | 1596.88h |
| 33 | 1.5.1 | Write Code | 6.76d | 2016-09-12 | 2016-09-21 | 26, 31 | 0d |  | PE1; PE3; PE5; PE6; PE7; PE8; PE9 | 378.64h |
| 34 | 1.5.2 | **Unit Testing** | 9.5d | 2016-09-21 | 2016-10-04 |  | 0d |  |  | 532.16h |
| 35 | 1.5.2.1 | Prepare/Execute Test Cases | 2.24d | 2016-09-21 | 2016-09-23 | 33 | 0d |  | PE1; PE3; PE5; PE6; PE7; PE8; PE9 | 125.36h |
| 36 | 1.5.2.2 | Fix Found Defects | 4.04d | 2016-09-23 | 2016-09-29 | 35 | 0d |  | PE1; PE3; PE5; PE6; PE7; PE8; PE9 | 226h |
| 37 | 1.5.2.3 | Test Fixed Defects | 3.23d | 2016-09-29 | 2016-10-04 | 36 | 0d |  | PE1; PE3; PE5; PE6; PE7; PE8; PE9 | 180.8h |
| 38 | 1.5.3 | **Code Inspection** | 12.62d | 2016-10-04 | 2016-10-21 |  | 0d |  |  | 686.08h |
| 39 | 1.5.3.1 | Preparation for Code Inspection | 7.17d | 2016-10-04 | 2016-10-13 | 37 | 0d |  | SE6; SE7; TE1; TE2 | 229.44h |
| 40 | 1.5.3.2 | Code Inspection Meeting | 4.73d | 2016-10-13 | 2016-10-20 | 39 | 0d |  | PE1; PE3; PE5; PE6; PE7; PE8; PE9; SE6; SE7; TE1; TE2 | 416.24h |
| 41 | 1.5.3.3 | Rework | 0.72d | 2016-10-20 | 2016-10-21 | 40 | 0d |  | PE1; PE3; PE5; PE6; PE7; PE8; PE9 | 40.4h |
| 42 | 1.6 | **System Integration Testing** | 56.58d | 2016-08-11 | 2016-10-31 |  | 0d |  |  | 1059.76h |
| 43 | 1.6.1 | Write Test Plan (TP) | 7.8d | 2016-08-11 | 2016-08-23 | 14 | 32.01d | 0d | TE1; TE2; TE3; TE302 | 249.6h |
| 44 | 1.6.2 | **Review TP** | 10.67d | 2016-08-23 | 2016-09-07 |  | 32.01d |  |  | 445.52h |
| 45 | 1.6.2.1 | Preparation for TP | 6.5d | 2016-08-23 | 2016-09-01 | 43 | 32.01d | 0d | RE7; RE8; RE102; RE103 | 208h |
| 46 | 1.6.2.2 | Review TP Meeting | 3.25d | 2016-09-01 | 2016-09-06 | 45 | 32.01d | 0d | TE1; TE2; TE3; TE302; RE7; RE8; RE102; RE103 | 208h |
| 47 | 1.6.2.3 | Rework | 0.92d | 2016-09-06 | 2016-09-07 | 46 | 32.01d |  | TE1; TE2; TE3; TE302 | 29.52h |
| 48 | 1.6.3 | Execute (TP) cases | 1.48d | 2016-10-21 | 2016-10-24 | 47, 41 | 0d |  | TE1; TE2; TE3; TE302; TE404; TE405; TE509; TE2403 | 94.64h |
| 49 | 1.6.4 | Fix Found Defects | 3.21d | 2016-10-24 | 2016-10-28 | 48 | 0d |  | PE1; PE3; PE5; PE6; PE7; PE8; PE9 | 180h |
| 50 | 1.6.5 | Test Fixed Defects | 1.41d | 2016-10-28 | 2016-10-31 | 49 | 0d |  | TE1; TE2; TE3; TE302; TE404; TE405; TE509; TE2403 | 90h |
| 51 | 1.7 | **Load, Stress and Performance Testing** | 60.83d | 2016-08-11 | 2016-11-04 |  | 2.04d |  |  | 1093.36h |
| 52 | 1.7.1 | Write Test Plan (TP) | 7.5d | 2016-08-11 | 2016-08-23 | 14 | 24.77d | 0d | TE2403; TE404; TE405; TE509 | 240h |

| ID | WBS | Task | Duration | Start | Finish | Predecessors | Total slack | Free slack | Resources | Work |
| --- | --- | --- | --- | --- | --- | --- | --- | --- | --- | --- |
| 53 | 1.7.2 | **Review TP** | 26.35d | 2016-08-23 | 2016-09-28 |  | 24.77d |  |  | 615.36h |
| 54 | 1.7.2.1 | Preparation for TP | 22.01d | 2016-08-23 | 2016-09-23 | 52 | 24.77d | 0d | RE103; RE117; RE118; RE119 | 400h |
| 55 | 1.7.2.2 | Review TP Meeting | 3.13d | 2016-09-23 | 2016-09-28 | 54 | 24.77d | 0d | TE404; TE405; TE509; TE2403; RE103; RE117; RE118; RE119 | 200.32h |
| 56 | 1.7.2.3 | Rework | 0.47d | 2016-09-28 | 2016-09-28 | 55 | 24.77d | 22.73d | TE404; TE405; TE509; TE2403 | 15.04h |
| 57 | 1.7.3 | Execute (TP) cases | 3.39d | 2016-10-31 | 2016-11-03 | 50, 56 | 2.04d | 0d | TE1; TE2; TE3; TE302; TE405; TE509; TE2403 | 190h |
| 58 | 1.7.4 | Fix Found Defects | 0.57d | 2016-11-03 | 2016-11-04 | 57 | 2.04d | 0d | PE1; PE3; PE5; PE6; PE7; PE8; PE9 | 32h |
| 59 | 1.7.5 | Test Fixed Defects | 0.29d | 2016-11-04 | 2016-11-04 | 58 | 2.04d |  | TE1; TE2; TE3; TE302; TE405; TE509; TE2403 | 16h |
| 60 | 1.8 | **Documentation** | 41.27d | 2016-09-12 | 2016-11-08 |  | 0d |  |  | 321.84h |
| 61 | 1.8.1 | User Documentation | 0.98d | 2016-09-12 | 2016-09-13 | 31 | 34.01d |  | DE6; DE7; DE8; DE103; DE104 | 39.04h |
| 62 | 1.8.2 | **Review UD** | 6.29d | 2016-10-31 | 2016-11-08 |  | 0d |  |  | 282.8h |
| 63 | 1.8.2.1 | Preparation for UD Review | 3.9d | 2016-10-31 | 2016-11-04 | 61, 50 | 0d |  | RE1; SE6; PE205; TE304 | 124.8h |
| 64 | 1.8.2.2 | Review UD Meeting | 1.95d | 2016-11-04 | 2016-11-08 | 63 | 0d |  | DE7; DE8; DE103; DE104; PE205; RE1; SE6; TE304; DE6 | 140.4h |
| 65 | 1.8.2.3 | Rework | 0.44d | 2016-11-08 | 2016-11-08 | 64 | 0d |  | DE6; DE7; DE8; DE103; DE104 | 17.6h |
| 66 | 1.9 | **Training Material** | 40.48d | 2016-09-12 | 2016-11-08 |  | 0.8d |  |  | 252.72h |
| 67 | 1.9.1 | Tutorial | 0.69d | 2016-09-12 | 2016-09-13 | 31 | 35.1d | 34.3d | DE105; DE203; DE204; DE205 | 22h |
| 68 | 1.9.2 | **Review Tutorial** | 5.49d | 2016-10-31 | 2016-11-08 |  | 0.8d |  |  | 230.72h |
| 69 | 1.9.2.1 | Preparation for Tutorial Review | 3.44d | 2016-10-31 | 2016-11-03 | 67, 50 | 0.8d | 0d | PE203; RE5; SE7; TE404 | 110.08h |
| 70 | 1.9.2.2 | Review Tutorial Meeting | 1.72d | 2016-11-03 | 2016-11-07 | 69 | 0.8d | 0d | DE203; DE204; DE205; PE203; RE5; SE7; TE404; DE105 | 110.08h |
| 71 | 1.9.2.3 | Rework | 0.33d | 2016-11-07 | 2016-11-08 | 70 | 0.8d |  | DE105; DE203; DE204; DE205 | 10.56h |
