# Assignment1-Allocation-25

Schedule from MS Project, 2016-07-22 to 2017-09-28.
Toshiba

## Calendars

- Standard: Mon-Fri 08:00-12:00, 13:00-17:00; Sat-Sun off.

## Resources

| Resource | Group |
| --- | --- |
| PM1 | Project Manager |
| PM2 | Project Manager |
| PM3 | Project Manager |
| PM4 | Project Manager |
| RE1 | Resource Engineer |
| RE5 | Resource Engineer |
| RE7 | Resource Engineer |
| RE8 | Resource Engineer |
| RE102 | Resource Engineer |
| RE103 | Resource Engineer |
| RE117 | Resource Engineer |
| RE118 | Resource Engineer |
| RE119 | Resource Engineer |
| SE6 | Systems Engineers |
| SE7 | Systems Engineers |
| SE8 | Systems Engineers |
| SE204 | Systems Engineers |
| SE205 | Systems Engineers |
| SE501 | Systems Engineers |
| SE503 | Systems Engineers |
| SE601 | Systems Engineers |
| SE603 | Systems Engineers |
| PE1 | Programmers/Software Engineer |
| PE3 | Programmers/Software Engineer |
| PE5 | Programmers/Software Engineer |
| PE6 | Programmers/Software Engineer |
| PE7 | Programmers/Software Engineer |
| PE8 | Programmers/Software Engineer |
| PE9 | Programmers/Software Engineer |
| PE10 | Programmers/Software Engineer |
| PE202 | Programmers/Software Engineer |
| PE203 | Programmers/Software Engineer |
| PE205 | Programmers/Software Engineer |
| TE1 | Testing Engineer |
| TE2 | Testing Engineer |
| TE3 | Testing Engineer |
| TE304 | Testing Engineer |
| TE302 | Testing Engineer |
| TE2403 | Testing Engineer |
| TE404 | Testing Engineer |
| TE405 | Testing Engineer |
| TE509 | Testing Engineer |
| DE6 | Documentation Engineer |
| DE7 | Documentation Engineer |
| DE8 | Documentation Engineer |
| DE103 | Documentation Engineer |
| DE104 | Documentation Engineer |
| DE105 | Documentation Engineer |
| DE203 | Documentation Engineer |
| DE204 | Documentation Engineer |
| DE205 | Documentation Engineer |

## Schedule

| ID | WBS | Task | Duration | Start | Finish | Predecessors | Total slack | Resources | Work |
| --- | --- | --- | --- | --- | --- | --- | --- | --- | --- |
| 1 | 1 | **Assignment1** | 309.34d | 2016-07-22 | 2017-09-28 |  | 0d |  | 5889.04h |
| 2 | 1.1 | **Project Plan** | 22.6d | 2016-07-22 | 2016-08-24 |  | 0d |  | 188.4h |
| 3 | 1.1.1 | Write Plan | 3.32d | 2016-07-22 | 2016-07-27 |  | 0d | PM1 [25%] | 6.64h |
| 4 | 1.1.2 | **Review Plan** | 19.28d | 2016-07-27 | 2016-08-24 |  | 0d |  | 181.76h |
| 5 | 1.1.2.1 | Preparation for review | 11d | 2016-07-27 | 2016-08-11 | 3 | 0d | DE6 [25%]; PE1 [25%]; RE1 [25%]; SE6 [25%]; TE1 [25%] | 110h |
| 6 | 1.1.2.2 | Review Meeting | 5.52d | 2016-08-11 | 2016-08-19 | 5 | 0d | DE6 [25%]; PE1 [25%]; PM1 [25%]; RE1 [25%]; SE6 [25%]; TE1 [25%] | 66.24h |
| 7 | 1.1.2.3 | Rework | 2.76d | 2016-08-19 | 2016-08-24 | 6 | 0d | PM1 [25%] | 5.52h |
| 8 | 1.2 | **Requirements** | 35.26d | 2016-08-24 | 2016-10-12 |  | 0d |  | 417.36h |
| 9 | 1.2.1 | Write requirements | 5.52d | 2016-08-24 | 2016-08-31 | 7 | 0d | RE5 [25%]; RE7 [25%]; RE8 [25%]; RE1 [25%] | 44.16h |
| 10 | 1.2.2 | Write Use Case model | 2.28d | 2016-08-24 | 2016-08-26 | 7 | 3.24d | RE102 [25%] | 4.56h |
| 11 | 1.2.3 | **Review requirements/Use case model** | 28.36d | 2016-08-31 | 2016-10-10 |  | 0d |  | 354.88h |
| 12 | 1.2.3.1 | Preparation for review | 15.56d | 2016-08-31 | 2016-09-22 | 9, 10 | 0d | DE6 [25%]; PE1 [25%]; SE6 [25%]; TE1 [25%] | 124.48h |
| 13 | 1.2.3.2 | Review Meeting | 12.8d | 2016-09-22 | 2016-10-10 | 12 | 0d | RE1 [25%]; RE5 [25%]; RE7 [25%]; RE8 [25%]; RE102 [25%]; DE6 [25%]; PE1 [25%]; SE6 [25%]; TE1 [25%] | 230.4h |
| 14 | 1.2.4 | Rework | 1.38d | 2016-10-10 | 2016-10-12 | 13 | 0d | RE1 [25%]; RE5 [25%]; RE7 [25%]; RE8 [25%]; RE102 [25%] | 13.76h |
| 15 | 1.3 | **Analysis** | 17.12d | 2016-10-12 | 2016-11-04 |  | 0d |  | 188.8h |
| 16 | 1.3.1 | Write Analysis Document | 2.94d | 2016-10-12 | 2016-10-17 | 14 | 0d | SE6 [25%]; SE7 [25%]; SE8 [25%]; SE204 [25%]; SE205 [25%] | 29.36h |
| 17 | 1.3.2 | **Review Analysis Document** | 14.18d | 2016-10-17 | 2016-11-04 |  | 0d |  | 159.44h |
| 18 | 1.3.2.1 | Preparation for Analysis Document | 8.8d | 2016-10-17 | 2016-10-28 | 16 | 0d | PE1 [25%]; PE3 [25%]; RE1 [25%]; RE5 [25%] | 70.4h |
| 19 | 1.3.2.2 | Review Meeting | 4.4d | 2016-10-28 | 2016-11-03 | 18 | 0d | SE6 [25%]; SE7 [25%]; SE8 [25%]; SE204 [25%]; SE205 [25%]; PE1 [25%]; PE3 [25%]; RE1 [25%]; RE5 [25%] | 79.2h |
| 20 | 1.3.2.3 | Rework | 0.98d | 2016-11-03 | 2016-11-04 | 19 | 0d | SE6 [25%]; SE7 [25%]; SE8 [25%]; SE204 [25%]; SE205 [25%] | 9.84h |
| 21 | 1.4 | **Design** | 69.26d | 2016-11-04 | 2017-02-09 |  | 0d |  | 769.92h |
| 22 | 1.4.1 | Write DD | 4.02d | 2016-11-04 | 2016-11-10 | 20 | 0d | SE6 [25%]; SE7 [25%]; SE8 [25%]; SE204 [25%]; SE205 [25%] | 40.24h |
| 23 | 1.4.2 | **Review DD** | 55.38d | 2016-11-10 | 2017-01-26 |  | 0d |  | 620.88h |
| 24 | 1.4.2.1 | Preparation for DD | 33.52d | 2016-11-10 | 2016-12-28 | 22 | 0d | PE1 [25%]; PE3 [25%]; RE1 [25%]; RE5 [25%] | 268.16h |
| 25 | 1.4.2.2 | Review Meeting | 16.76d | 2016-12-28 | 2017-01-19 | 24 | 0d | SE6 [25%]; SE7 [25%]; SE8 [25%]; SE204 [25%]; SE205 [25%]; PE1 [25%]; PE3 [25%]; RE1 [25%]; RE5 [25%] | 301.68h |
| 26 | 1.4.2.3 | Rework | 5.1d | 2017-01-19 | 2017-01-26 | 25 | 0d | SE6 [25%]; SE7 [25%]; SE8 [25%]; SE204 [25%]; SE205 [25%] | 51.04h |
| 27 | 1.4.3 | Write Data Model | 2.2d | 2017-01-26 | 2017-01-31 | 26 | 0d | SE6 [25%]; SE7 [25%]; SE8 [25%]; SE204 [25%]; SE205 [25%] | 22h |

| ID | WBS | Task | Duration | Start | Finish | Predecessors | Total slack | Free slack | Resources | Work |
| --- | --- | --- | --- | --- | --- | --- | --- | --- | --- | --- |
| 28 | 1.4.4 | **Review DM** | 7.66d | 2017-01-31 | 2017-02-09 |  | 0d |  |  | 86.8h |
| 29 | 1.4.4.1 | Preparation for DM | 3.68d | 2017-01-31 | 2017-02-03 | 27 | 0d |  | PE1 [25%]; PE3 [25%]; RE1 [25%]; RE5 [25%] | 29.44h |
| 30 | 1.4.4.2 | Review Meeting | 2.2d | 2017-02-03 | 2017-02-07 | 29 | 0d |  | SE6 [25%]; SE7 [25%]; SE8 [25%]; SE204 [25%]; SE205 [25%]; PE1 [25%]; PE3 [25%]; RE1 [25%]; RE5 [25%] | 39.6h |
| 31 | 1.4.4.3 | Rework | 1.78d | 2017-02-07 | 2017-02-09 | 30 | 0d |  | SE6 [25%]; SE7 [25%]; SE8 [25%]; SE204 [25%]; SE205 [25%] | 17.76h |
| 32 | 1.5 | **Coding and unit test** | 115.54d | 2017-02-09 | 2017-07-21 |  | 0d |  |  | 1596.88h |
| 33 | 1.5.1 | Write Code | 27.05d | 2017-02-09 | 2017-03-20 | 26, 31 | 0d |  | PE1 [25%]; PE3 [25%]; PE5 [25%]; PE6 [25%]; PE7 [25%]; PE8 [25%]; PE9 [25%] | 378.64h |
| 34 | 1.5.2 | **Unit Testing** | 38.01d | 2017-03-20 | 2017-05-11 |  | 0d |  |  | 532.16h |
| 35 | 1.5.2.1 | Prepare/Execute Test Cases | 8.95d | 2017-03-20 | 2017-03-31 | 33 | 0d |  | PE1 [25%]; PE3 [25%]; PE5 [25%]; PE6 [25%]; PE7 [25%]; PE8 [25%]; PE9 [25%] | 125.36h |
| 36 | 1.5.2.2 | Fix Found Defects | 16.14d | 2017-03-31 | 2017-04-24 | 35 | 0d |  | PE1 [25%]; PE3 [25%]; PE5 [25%]; PE6 [25%]; PE7 [25%]; PE8 [25%]; PE9 [25%] | 226h |
| 37 | 1.5.2.3 | Test Fixed Defects | 12.91d | 2017-04-24 | 2017-05-11 | 36 | 0d |  | PE1 [25%]; PE3 [25%]; PE5 [25%]; PE6 [25%]; PE7 [25%]; PE8 [25%]; PE9 [25%] | 180.8h |
| 38 | 1.5.3 | **Code Inspection** | 50.49d | 2017-05-11 | 2017-07-21 |  | 0d |  |  | 686.08h |
| 39 | 1.5.3.1 | Preparation for Code Inspection | 28.68d | 2017-05-11 | 2017-06-21 | 37 | 0d |  | SE6 [25%]; SE7 [25%]; TE1 [25%]; TE2 [25%] | 229.44h |
| 40 | 1.5.3.2 | Code Inspection Meeting | 18.92d | 2017-06-21 | 2017-07-18 | 39 | 0d |  | PE1 [25%]; PE3 [25%]; PE5 [25%]; PE6 [25%]; PE7 [25%]; PE8 [25%]; PE9 [25%]; SE6 [25%]; SE7 [25%]; TE1 [25%]; TE2 [25%] | 416.24h |
| 41 | 1.5.3.3 | Rework | 2.89d | 2017-07-18 | 2017-07-21 | 40 | 0d |  | PE1 [25%]; PE3 [25%]; PE5 [25%]; PE6 [25%]; PE7 [25%]; PE8 [25%]; PE9 [25%] | 40.4h |
| 42 | 1.6 | **System Integration Testing** | 226.32d | 2016-10-12 | 2017-08-24 |  | 0d |  |  | 1059.76h |
| 43 | 1.6.1 | Write Test Plan (TP) | 31.2d | 2016-10-12 | 2016-11-24 | 14 | 128.04d | 0d | TE1 [25%]; TE2 [25%]; TE3 [25%]; TE302 [25%] | 249.6h |
| 44 | 1.6.2 | **Review TP** | 42.69d | 2016-11-24 | 2017-01-24 |  | 128.04d |  |  | 445.52h |
| 45 | 1.6.2.1 | Preparation for TP | 26d | 2016-11-24 | 2016-12-30 | 43 | 128.04d | 0d | RE7 [25%]; RE8 [25%]; RE102 [25%]; RE103 [25%] | 208h |
| 46 | 1.6.2.2 | Review TP Meeting | 13d | 2016-12-30 | 2017-01-18 | 45 | 128.04d | 0d | TE1 [25%]; TE2 [25%]; TE3 [25%]; TE302 [25%]; RE7 [25%]; RE8 [25%]; RE102 [25%]; RE103 [25%] | 208h |
| 47 | 1.6.2.3 | Rework | 3.69d | 2017-01-18 | 2017-01-24 | 46 | 128.04d |  | TE1 [25%]; TE2 [25%]; TE3 [25%]; TE302 [25%] | 29.52h |
| 48 | 1.6.3 | Execute (TP) cases | 5.92d | 2017-07-21 | 2017-07-31 | 47, 41 | 0d |  | TE1 [25%]; TE2 [25%]; TE3 [25%]; TE302 [25%]; TE404 [25%]; TE405 [25%]; TE509 [25%]; TE2403 [25%] | 94.64h |
| 49 | 1.6.4 | Fix Found Defects | 12.86d | 2017-07-31 | 2017-08-17 | 48 | 0d |  | PE1 [25%]; PE3 [25%]; PE5 [25%]; PE6 [25%]; PE7 [25%]; PE8 [25%]; PE9 [25%] | 180h |
| 50 | 1.6.5 | Test Fixed Defects | 5.62d | 2017-08-17 | 2017-08-24 | 49 | 0d |  | TE1 [25%]; TE2 [25%]; TE3 [25%]; TE302 [25%]; TE404 [25%]; TE405 [25%]; TE509 [25%]; TE2403 [25%] | 90h |
| 51 | 1.7 | **Load, Stress and Performance Testing** | 243.32d | 2016-10-12 | 2017-09-18 |  | 8.16d |  |  | 1093.36h |
| 52 | 1.7.1 | Write Test Plan (TP) | 30d | 2016-10-12 | 2016-11-23 | 14 | 99.68d | 0d | TE2403 [25%]; TE404 [25%]; TE405 [25%]; TE509 [25%] | 240h |

| ID | WBS | Task | Duration | Start | Finish | Predecessors | Total slack | Free slack | Resources | Work |
| --- | --- | --- | --- | --- | --- | --- | --- | --- | --- | --- |
| 53 | 1.7.2 | **Review TP** | 104.8d | 2016-11-23 | 2017-04-19 |  | 99.68d |  |  | 615.36h |
| 54 | 1.7.2.1 | Preparation for TP | 89.66d | 2016-11-23 | 2017-03-29 | 52 | 99.68d | 0d | RE103 [25%]; RE117 [25%]; RE118 [25%]; RE119 [25%] | 400h |
| 55 | 1.7.2.2 | Review TP Meeting | 12.52d | 2017-03-29 | 2017-04-17 | 54 | 99.68d | 0d | TE404 [25%]; TE405 [25%]; TE509 [25%]; TE2403 [25%]; RE103 [25%]; RE117 [25%]; RE118 [25%]; RE119 [25%] | 200.32h |
| 56 | 1.7.2.3 | Rework | 1.88d | 2017-04-17 | 2017-04-19 | 55 | 99.68d | 91.52d | TE404 [25%]; TE405 [25%]; TE509 [25%]; TE2403 [25%] | 15.04h |
| 57 | 1.7.3 | Execute (TP) cases | 13.57d | 2017-08-24 | 2017-09-13 | 50, 56 | 8.16d | 0d | TE1 [25%]; TE2 [25%]; TE3 [25%]; TE302 [25%]; TE405 [25%]; TE509 [25%]; TE2403 [25%] | 190h |
| 58 | 1.7.4 | Fix Found Defects | 2.29d | 2017-09-13 | 2017-09-15 | 57 | 8.16d | 0d | PE1 [25%]; PE3 [25%]; PE5 [25%]; PE6 [25%]; PE7 [25%]; PE8 [25%]; PE9 [25%] | 32h |
| 59 | 1.7.5 | Test Fixed Defects | 1.14d | 2017-09-15 | 2017-09-18 | 58 | 8.16d |  | TE1 [25%]; TE2 [25%]; TE3 [25%]; TE302 [25%]; TE405 [25%]; TE509 [25%]; TE2403 [25%] | 16h |
| 60 | 1.8 | **Documentation** | 165.1d | 2017-02-09 | 2017-09-28 |  | 0d |  |  | 321.84h |
| 61 | 1.8.1 | User Documentation | 3.9d | 2017-02-09 | 2017-02-15 | 31 | 136.04d |  | DE6 [25%]; DE7 [25%]; DE8 [25%]; DE103 [25%]; DE104 [25%] | 39.04h |
| 62 | 1.8.2 | **Review UD** | 25.16d | 2017-08-24 | 2017-09-28 |  | 0d |  |  | 282.8h |
| 63 | 1.8.2.1 | Preparation for UD Review | 15.6d | 2017-08-24 | 2017-09-15 | 61, 50 | 0d |  | RE1 [25%]; SE6 [25%]; PE205 [25%]; TE304 [25%] | 124.8h |
| 64 | 1.8.2.2 | Review UD Meeting | 7.8d | 2017-09-15 | 2017-09-27 | 63 | 0d |  | DE7 [25%]; DE8 [25%]; DE103 [25%]; DE104 [25%]; PE205 [25%]; RE1 [25%]; SE6 [25%]; TE304 [25%]; DE6 [25%] | 140.4h |
| 65 | 1.8.2.3 | Rework | 1.76d | 2017-09-27 | 2017-09-28 | 64 | 0d |  | DE6 [25%]; DE7 [25%]; DE8 [25%]; DE103 [25%]; DE104 [25%] | 17.6h |
| 66 | 1.9 | **Training Material** | 161.9d | 2017-02-09 | 2017-09-25 |  | 3.2d |  |  | 252.72h |
| 67 | 1.9.1 | Tutorial | 2.75d | 2017-02-09 | 2017-02-14 | 31 | 140.39d | 137.19d | DE105 [25%]; DE203 [25%]; DE204 [25%]; DE205 [25%] | 22h |
| 68 | 1.9.2 | **Review Tutorial** | 21.96d | 2017-08-24 | 2017-09-25 |  | 3.2d |  |  | 230.72h |
| 69 | 1.9.2.1 | Preparation for Tutorial Review | 13.76d | 2017-08-24 | 2017-09-13 | 67, 50 | 3.2d | 0d | PE203 [25%]; RE5 [25%]; SE7 [25%]; TE404 [25%] | 110.08h |
| 70 | 1.9.2.2 | Review Tutorial Meeting | 6.88d | 2017-09-13 | 2017-09-22 | 69 | 3.2d | 0d | DE203 [25%]; DE204 [25%]; DE205 [25%]; PE203 [25%]; RE5 [25%]; SE7 [25%]; TE404 [25%]; DE105 [25%] | 110.08h |
| 71 | 1.9.2.3 | Rework | 1.32d | 2017-09-22 | 2017-09-25 | 70 | 3.2d |  | DE105 [25%]; DE203 [25%]; DE204 [25%]; DE205 [25%] | 10.56h |
