# Assignment#2

Schedule from MS Project, 2016-07-29 to 2016-11-30.
Toshiba

## Calendars

- Standard: Mon-Fri 08:00-12:00, 13:00-17:00; Sat-Sun off.

## Resources

| Resource | Group |
| --- | --- |
| PM2 | Project Manager |
| RE103 | Resource Engineer |
| RE117 | Resource Engineer |
| RE118 | Resource Engineer |
| RE119 | Resource Engineer |
| SE501 | Systems Engineers |
| SE503 | Systems Engineers |
| SE601 | Systems Engineers |
| SE603 | Systems Engineers |
| SE934 | Systems Engineers |
| SE935 | Systems Engineers |
| SE936 | Systems Engineers |
| SE937 | Systems Engineers |
| PE202 | Programmers/Software Engineer |
| PE203 | Programmers/Software Engineer |
| PE205 | Programmers/Software Engineer |
| PE934 | Programmers/Software Engineer |
| PE935 | Programmers/Software Engineer |
| PE936 | Programmers/Software Engineer |
| TE2403 | Testing Engineer |
| TE509 | Testing Engineer |
| TE912 | Testing Engineer |
| TE913 | Testing Engineer |
| TE914 | Testing Engineer |
| DE203 | Documentation Engineer |
| DE204 | Documentation Engineer |
| DE205 | Documentation Engineer |

## Schedule

| ID | WBS | Task | Duration | Start | Finish | Predecessors | Total slack | Free slack | Resources | Work |
| --- | --- | --- | --- | --- | --- | --- | --- | --- | --- | --- |
| 1 | 1 | **Assignment#2** | 88.92d | 2016-07-29 | 2016-11-30 |  | 0d |  |  | 3298.72h |
| 2 | 1.1 | **Project Plan** | 5.48d | 2016-07-29 | 2016-08-05 |  | 0d |  |  | 100h |
| 3 | 1.1.1 | Write Plan | 2.69d | 2016-07-29 | 2016-08-02 |  | 0d |  | PM2 | 21.52h |
| 4 | 1.1.2 | **Review Plan** | 2.79d | 2016-08-02 | 2016-08-05 | 3 | 0d |  |  | 78.48h |
| 5 | 1.1.2.1 | Preparation for review | 1.08d | 2016-08-02 | 2016-08-03 | 3 | 0d |  | DE205; PE934; RE119; SE934; TE912 | 43.2h |
| 6 | 1.1.2.2 | Review meeting | 0.54d | 2016-08-03 | 2016-08-04 | 5 | 0d |  | DE205; PE934; PM2; RE119; SE934; TE912 | 25.92h |
| 7 | 1.1.2.3 | Rework | 1.17d | 2016-08-04 | 2016-08-05 | 6 | 0d |  | PM2 | 9.36h |
| 8 | 1.2 | **Requirement** | 14.51d | 2016-08-05 | 2016-08-25 | 7 | 0d |  |  | 472.96h |
| 9 | 1.2.1 | Write Requirements | 1.59d | 2016-08-05 | 2016-08-09 | 7 | 0d |  | RE119; RE103; RE117; RE118 | 51.04h |
| 10 | 1.2.2 | **Review Requirements** | 12.91d | 2016-08-09 | 2016-08-25 | 9 | 0d |  |  | 421.92h |
| 11 | 1.2.2.1 | Preparation for review | 7.97d | 2016-08-09 | 2016-08-19 | 9 | 0d |  | DE205; PE934; SE934; TE912 | 255.04h |
| 12 | 1.2.2.2 | Review meeting | 3.98d | 2016-08-19 | 2016-08-25 | 11 | 0d |  | DE205; PE934; RE119; SE934; TE912 | 159.2h |
| 13 | 1.2.2.3 | Rework | 0.96d | 2016-08-25 | 2016-08-25 | 12 | 0d |  | RE119 | 7.68h |
| 14 | 1.3 | **Lab and Environment Setup** | 4d | 2016-08-25 | 2016-08-31 | 13 | 8.72d |  |  | 120h |
| 15 | 1.3.1 | **Hardware** | 2d | 2016-08-25 | 2016-08-29 | 13 | 8.72d |  |  | 59.2h |
| 16 | 1.3.1.1 | Install Server | 2d | 2016-08-25 | 2016-08-29 | 13 | 8.72d | 0d | SE934; SE935 | 32h |
| 17 | 1.3.1.2 | Install Clients | 1.7d | 2016-08-25 | 2016-08-29 | 13 | 9.02d | 0.3d | SE936; SE937 | 27.2h |
| 18 | 1.3.2 | **Software** | 2d | 2016-08-29 | 2016-08-31 | 16, 17 | 8.72d |  |  | 60.8h |
| 19 | 1.3.2.1 | Install Development Tools | 1.6d | 2016-08-29 | 2016-08-31 | 16, 17 | 9.12d |  | SE934 | 12.8h |
| 20 | 1.3.2.2 | Install Testing Tools | 2d | 2016-08-29 | 2016-08-31 | 16, 17 | 8.72d |  | SE935; SE936; SE937 | 48h |
| 21 | 1.4 | **Analysis/Design Document** | 9.21d | 2016-08-25 | 2016-09-08 | 13 | 0d |  |  | 232.32h |
| 22 | 1.4.1 | Write DD | 1.17d | 2016-08-25 | 2016-08-29 | 13 | 0d |  | SE603; SE503; SE601 | 28h |
| 23 | 1.4.2 | **Review DD** | 8.04d | 2016-08-29 | 2016-09-08 | 22 | 0d |  |  | 204.32h |
| 24 | 1.4.2.1 | Preparation for review | 3.5d | 2016-08-29 | 2016-09-01 | 22 | 0d |  | PE934; PE935; RE118; RE119 | 112h |
| 25 | 1.4.2.2 | Review Meeting | 1.75d | 2016-09-01 | 2016-09-05 | 24 | 0d |  | PE934; PE935; RE118; RE119; SE603 | 70h |
| 26 | 1.4.2.3 | Rework | 2.79d | 2016-09-05 | 2016-09-08 | 25 | 0d |  | SE603 | 22.32h |

| ID | WBS | Task | Duration | Start | Finish | Predecessors | Total slack | Free slack | Resources | Work |
| --- | --- | --- | --- | --- | --- | --- | --- | --- | --- | --- |
| 27 | 1.5 | **Data Model** | 3.51d | 2016-09-08 | 2016-09-13 | 26 | 0d |  |  | 74.24h |
| 28 | 1.5.1 | Create Data Model | 1d | 2016-09-08 | 2016-09-09 | 26 | 0d |  | SE601; SE501; SE503 | 24h |
| 29 | 1.5.2 | **Review Data Model** | 2.51d | 2016-09-09 | 2016-09-13 | 28 | 0d |  |  | 50.24h |
| 30 | 1.5.2.1 | Preparation for DM | 0.75d | 2016-09-09 | 2016-09-09 | 28 | 0d |  | PE934; PE935; RE118; RE119 | 24h |
| 31 | 1.5.2.2 | Review meeting | 0.38d | 2016-09-09 | 2016-09-12 | 30 | 0d |  | PE934; PE935; RE118; RE119; SE601 | 15.2h |
| 32 | 1.5.2.3 | Rework | 1.38d | 2016-09-12 | 2016-09-13 | 31 | 0d |  | SE601 | 11.04h |
| 33 | 1.6 | **Code and Unit test** | 32.95d | 2016-09-13 | 2016-10-28 | 32, 19, 20 | 0d |  |  | 1284h |
| 34 | 1.6.1 | Write Code | 17.5d | 2016-09-13 | 2016-10-07 | 32, 19, 20 | 0d |  | PE936; PE203; PE205; PE934; PE935 | 700h |
| 35 | 1.6.2 | **Unit Testing** | 8.71d | 2016-10-07 | 2016-10-19 | 34 | 0d |  |  | 348.56h |
| 36 | 1.6.2.1 | Prepare/Execute Test Cases | 2.34d | 2016-10-07 | 2016-10-11 | 34 | 0d |  | PE936; PE203; PE205; PE934; PE935 | 93.52h |
| 37 | 1.6.2.2 | Fix Found Defects | 4.25d | 2016-10-11 | 2016-10-17 | 36 | 0d |  | PE936; PE203; PE205; PE934; PE935 | 170h |
| 38 | 1.6.2.3 | Test Fixed Defects | 2.13d | 2016-10-17 | 2016-10-19 | 37 | 0d |  | PE936; PE203; PE205; PE934; PE935 | 85.04h |
| 39 | 1.6.3 | **Code Inspection** | 6.73d | 2016-10-19 | 2016-10-28 | 38 | 0d |  |  | 235.44h |
| 40 | 1.6.3.1 | Preparation for Code Inspection | 2.92d | 2016-10-19 | 2016-10-24 | 38 | 0d |  | SE934; SE935; TE912; TE913 | 93.44h |
| 41 | 1.6.3.2 | Code Inspection meeting | 2.5d | 2016-10-24 | 2016-10-27 | 40 | 0d |  | PE934; SE934; SE935; TE912; TE913 | 100h |
| 42 | 1.6.3.3 | Rework | 1.31d | 2016-10-27 | 2016-10-28 | 41 | 0d |  | PE934; PE935; PE936; PE205 | 42h |
| 43 | 1.7 | **Testing** | 59.63d | 2016-08-25 | 2016-11-17 | 13 | 0d |  |  | 687.04h |
| 44 | 1.7.1 | Write Test Plan (TP) | 1.12d | 2016-08-25 | 2016-08-29 | 13 | 28.72d | 0d | TE912; TE913; TE914 | 26.8h |
| 45 | 1.7.2 | **Review TP** | 15.83d | 2016-08-29 | 2016-09-19 | 44 | 28.72d |  |  | 306.64h |
| 46 | 1.7.2.1 | Preparation for TP | 10.88d | 2016-08-29 | 2016-09-14 | 44 | 28.72d | 0d | RE103; RE117; RE118; RE119 | 178.56h |
| 47 | 1.7.2.2 | Review TP meeting | 2.79d | 2016-09-14 | 2016-09-16 | 46 | 28.72d | 0d | RE103; RE117; RE118; RE119; TE912 | 111.6h |
| 48 | 1.7.2.3 | Rework | 1.03d | 2016-09-16 | 2016-09-19 | 47 | 28.72d |  | TE912; TE913 | 16.48h |
| 49 | 1.7.3 | Execute TP (test cases) | 11.22d | 2016-10-28 | 2016-11-14 | 42, 48 | 0d |  | TE912; TE509; TE913; TE914; TE2403 | 265.6h |
| 50 | 1.7.4 | Fix Found Defects | 2.75d | 2016-11-14 | 2016-11-17 | 49 | 0d |  | PE936; PE934; PE935; PE202 | 88h |

| ID | WBS | Task | Duration | Start | Finish | Predecessors | Total slack | Resources | Work |
| --- | --- | --- | --- | --- | --- | --- | --- | --- | --- |
| 51 | 1.8 | **Documentation** | 68.94d | 2016-08-25 | 2016-11-30 | 13 | 0d |  | 328.16h |
| 52 | 1.8.1 | User Documentation | 1.46d | 2016-08-25 | 2016-08-29 | 13 | 58.17d | DE205; DE203; DE204 | 35.04h |
| 53 | 1.8.2 | **Review UD** | 9.31d | 2016-11-17 | 2016-11-30 | 52, 50 | 0d |  | 293.12h |
| 54 | 1.8.2.1 | Preparation for UD | 5.47d | 2016-11-17 | 2016-11-25 | 52, 50 | 0d | PE934; RE119; SE934; TE912 | 175.04h |
| 55 | 1.8.2.2 | Review UD meeting | 2.73d | 2016-11-25 | 2016-11-29 | 54 | 0d | DE205; PE934; RE119; SE934; TE912 | 109.2h |
| 56 | 1.8.2.3 | Rework | 1.11d | 2016-11-29 | 2016-11-30 | 55 | 0d | DE205 | 8.88h |
